Schedule from MS Project, 2014-09-03 to 2015-12-25, costs in р., A marks actual dates.
SPecialiST RePack

## Calendars

- Стандартный: Mon-Fri 09:00-13:00, 14:00-18:00; Sat-Sun off. Exceptions (off unless hours are given): 2014-11-04 (День народного Единства, recurring), 2015-01-01 to 2015-01-11 (Новый год, recurring), 2015-02-23 (День защитника Отечества, recurring), 2015-03-08 to 2015-03-09 (Международный женский день , recurring), 2015-05-01 to 2015-05-03 (Праздник весны и труда, recurring), 2015-05-09 (День победы, recurring), 2015-06-12 (День суверенитета РФ, recurring), 2015-11-04 (День народного единства).

## Resources

| Resource | Rate | Cost per use |
| --- | --- | --- |
| Программист | 200 |  |
| Программный инженер | 230 |  |
| Тестировщик | 230 |  |
| Менеджер проекта | 250 |  |
| Сервис-менеджер | 235 |  |
| Системный архитектор | 210 |  |
| Бумага | 120 |  |
| Компьютер | 40000 |  |
| Орг техника | 5000 |  |
| Юрист | 250 |  |
| Argo UML | 30000 | 30000 |
| Microsoft Visiual Studio 2010 | 50000 |  |
| Borland Delphi 7 | 67000 |  |
| InterBase | 46000 |  |
| Сервис-менеджер заказчика | 240 |  |
| Денежные вложения |  |  |

## Schedule

| ID | WBS | Task | Type | Duration | Start | Finish | Predecessors | Complete | Remaining | Total slack | Free slack | Resources | Work | Actual work | Cost | Actual cost |
| --- | --- | --- | --- | --- | --- | --- | --- | --- | --- | --- | --- | --- | --- | --- | --- | --- |
| 1 | 1 | Начало проекта | milestone | 0d | 2014-09-03 | 2014-09-03 |  |  |  | 272d |  |  |  |  |  |  |
| 2 | 2 | **Разработка и внедрение информационно-аналитической системы** |  | 336.5d | 2014-09-03 A | 2015-12-25 |  | 15% | 284.5d | 0d |  |  | 4968h | 840h | 4,118,140 | 875,200 |
| 3 | 2.1 | **Организация управления проектом** |  | 17d | 2014-09-03 A | 2014-09-25 A |  | 100% |  |  |  |  | 368h | 368h | 585,080 | 535,080 |
| 4 | 2.1.1 | Заключение контракта |  | 2d | 2014-09-03 A | 2014-09-04 A |  | 100% |  |  |  | Бумага; Менеджер проекта; Юрист; Орг техника; Компьютер; Сервис-менеджер заказчика | 48h | 48h | 56,960 | 56,960 |
| 5 | 2.1.2 | Сбор команды проекта |  | 5d | 2014-09-05 A | 2014-09-11 A | 4 | 100% |  |  |  | Менеджер проекта; Программист; Программный инженер; Сервис-менеджер; Системный архитектор; Тестировщик | 240h | 240h | 54,200 | 54,200 |
| 6 | 2.1.3 | Обучение членов проектной команды |  | 10d | 2014-09-12 A | 2014-09-25 A | 5 | 100% |  |  |  | Компьютер [1000%]; Орг техника; Бумага; Сервис-менеджер; Денежные вложения [6.2%] | 80h | 80h | 473,920 | 423,920 |
| 7 | 2.2 | **Формирование требований и разработка ТЗ** |  | 35d | 2014-09-26 A | 2014-11-14 A |  | 100% |  |  |  |  | 472h | 472h | 340,120 | 340,120 |
| 8 | 2.2.1 | Системно-аналитеческое обследование объекта автоматизации |  | 15d | 2014-09-26 A | 2014-10-16 A | 6 | 100% |  |  |  | Программный инженер; Сервис-менеджер; Компьютер | 240h | 240h | 95,800 | 95,800 |
| 9 | 2.2.2 | Разработка концептуальной модели данных |  | 11d | 2014-10-17 A | 2014-10-31 A | 8 | 100% |  |  |  | Компьютер; Программный инженер; Argo UML | 88h | 88h | 120,240 | 120,240 |
| 10 | 2.2.3 | Разработка ТЗ |  | 6d | 2014-11-03 A | 2014-11-11 A | 9 | 100% |  |  |  | Бумага; Программный инженер; Сервис-менеджер; Компьютер; Орг техника | 96h | 96h | 67,440 | 67,440 |
| 11 | 2.2.4 | Согласование и утверждение ТЗ |  | 3d | 2014-11-12 A | 2014-11-14 A | 10 | 100% |  |  |  | Менеджер проекта; Программный инженер; Компьютер; Бумага; Орг техника | 48h | 48h | 56,640 | 56,640 |
| 12 | 2.3 | **Эскизная разработка информационной системы** |  | 95d | 2014-11-17 | 2015-03-31 |  |  |  | 1d |  |  | 1296h |  | 928,200 |  |
| 13 | 2.3.1 | Определение общей функциональной и технической архитектур |  | 10d | 2014-11-17 | 2014-11-28 | 11 |  |  | 1d | 0d | Системный архитектор; Компьютер; Программный инженер; Argo UML | 160h |  | 135,200 |  |
| 14 | 2.3.2 | Разработка логической модели данных |  | 25d | 2014-12-01 | 2015-01-05 | 13 |  |  | 1d | 0d | Microsoft Visiual Studio 2010; Программный инженер; Денежные вложения [1.9%] | 200h |  | 135,000 |  |
| 15 | 2.3.3 | Обоснование выбора программного обеспечения и технической инфрастуктуры |  | 25d | 2015-01-06 | 2015-02-09 | 14 |  |  | 1d | 0d | Программист; Менеджер проекта | 400h |  | 90,000 |  |
| 16 | 2.3.4 | Разработка предварительного регламента взаимодействия компонент информационной системы |  | 15d | 2015-02-10 | 2015-03-03 | 15 |  |  | 1d | 0d | Программный инженер; Программист; Microsoft Visiual Studio 2010 | 240h |  | 101,600 |  |
| 17 | 2.3.5 | **Эскизное описание процессов ETL** |  | 10d | 2015-03-04 | 2015-03-17 |  |  |  | 1d |  |  | 136h |  | 317,880 |  |
| 18 | 2.3.5.1 | Общее описание процессов извлечения данных |  | 3d | 2015-03-04 | 2015-03-06 | 16 |  |  | 1d | 0d | Компьютер; Borland Delphi 7; Программист; InterBase | 24h |  | 157,800 |  |
| 19 | 2.3.5.2 | Описание алгоритмов трансформации, загрузки и агрегации данных |  | 7d | 2015-03-09 | 2015-03-17 | 18 |  |  | 1d | 0d | Microsoft Visiual Studio 2010; Программист; Программный инженер; Borland Delphi 7; Денежные вложения [3.4%] | 112h |  | 160,080 |  |
| 20 | 2.3.6 | Эскизная разработка пользовательских интерфейсов |  | 5d | 2015-03-18 | 2015-03-24 | 19 |  |  | 1d | 0d | Программный инженер; Программист; Borland Delphi 7 | 80h |  | 84,200 |  |
| 21 | 2.3.7 | Согласование и утверждение |  | 5d | 2015-03-25 | 2015-03-31 | 20 |  |  | 1d | 0d | Менеджер проекта; Программный инженер; Бумага; Орг техника; Компьютер | 80h |  | 64,320 |  |
| 22 | 2.4 | **Техническая разработка** |  | 85d | 2015-04-01 | 2015-07-30 |  |  |  | 1d |  |  | 960h |  | 821,040 |  |
| 23 | 2.4.1 | Определение функциональной и технической архитектур |  | 15d | 2015-04-01 | 2015-04-21 | 21 |  |  | 1d | 0d | Компьютер; Бумага; Орг техника; Microsoft Visiual Studio 2010; Программист; Программный инженер; Системный архитектор; Денежные вложения [2.2%] | 360h |  | 198,920 |  |
| 24 | 2.4.2 | Разработка физической модели данных |  | 10d | 2015-04-22 | 2015-05-06 | 23 |  |  | 1d | 0d | InterBase; Программист; Денежные вложения [1.2%] | 80h |  | 72,000 |  |
| 25 | 2.4.3 | Разрабока и согласование регламенттов взаимодействиякомпонентов информационной системы |  | 10d | 2015-05-07 | 2015-05-20 | 24 |  |  | 1d | 0d | Borland Delphi 7; Программист | 80h |  | 83,000 |  |
| 26 | 2.4.4 | Разработка алгоритмов извлечения данных, обеспечения качества данных |  | 20d | 2015-05-21 | 2015-06-18 | 25 |  |  | 1d | 0d | Borland Delphi 7; Программист; Денежные вложения [2.2%]; Компьютер | 160h |  | 174,000 |  |
| 27 | 2.4.5 | Разработка интерфейсов ввода и представления данных |  | 15d | 2015-06-19 | 2015-07-09 | 26 |  |  | 1d | 0d | Borland Delphi 7; Программист; Денежные вложения [0.8%] | 120h |  | 101,000 |  |
| 28 | 2.4.6 | Разграничение прав доступа |  | 10d | 2015-07-10 | 2015-07-23 | 27 |  |  | 1d | 0d | InterBase; Программист; Borland Delphi 7 | 80h |  | 129,000 |  |
| 29 | 2.4.7 | Согласование и утверждение |  | 5d | 2015-07-24 | 2015-07-30 | 28 |  |  | 1d | 0d | Менеджер проекта; Программист; Бумага; Компьютер; Орг техника | 80h |  | 63,120 |  |

Notes:
- 4: Проконсультироваться с юристом на предмет правильности оформления контракта и соблюдения всех правил
- 6: Компетенция участников~проекта соответствует требованиям. Этап реализуется по необходимости
- 16: Рекумендуется также на этапе определить состав сущностей области временного хранения и области обмена данными

| ID | WBS | Task | Type | Duration | Start | Finish | Predecessors | Total slack | Free slack | Resources | Work | Cost |
| --- | --- | --- | --- | --- | --- | --- | --- | --- | --- | --- | --- | --- |
| 30 | 2.5 | **Разработка рабочей документации** |  | 39d | 2015-07-31 | 2015-09-23 |  | 1d |  |  | 624h | 228,760 |
| 31 | 2.5.1 | Разработка рабочей документации на систему и ее части |  | 32d | 2015-07-31 | 2015-09-14 | 29 | 1d | 0d | Бумага; Орг техника; Компьютер; Программист; Сервис-менеджер | 512h | 156,480 |
| 32 | 2.5.2 | Согласование и утверждение рабочей документации |  | 7d | 2015-09-15 | 2015-09-23 | 31 | 1d |  | Сервис-менеджер; Менеджер проекта; Бумага; Орг техника; Компьютер | 112h | 72,280 |
| 33 | 2.6 | Ввод в эксплуатацию |  | 65.5d | 2015-09-25 | 2015-12-25 | 32 | 0d |  |  | 1248h | 1,214,940 |
| 34 | 3 | Закрытие проета | milestone | 0d | 2015-12-25 | 2015-12-25 | 33 | 0d |  |  |  |  |
